# Proyecto de Graduación LoRA-HDL-QA

How a schedule from MS Project XML changed from version to version. A marks actual dates.

## Version 1 (saved 2026-03-18)

Note of the change: Initial commit: EDT LoRA-HDL-QA con fix de ProjectLibre

| ID | WBS | Task | Duration | Start | Finish | Predecessors | Total float |
| --- | --- | --- | --- | --- | --- | --- | --- |
| 1 | 1.1 | **INICIO** | 0h | 2026-02-02 | 2026-02-27 |  | 0d |
| 2 | 1.1.1 | **Inscripción del Tema** | 0h | 2026-02-02 | 2026-02-13 |  | 0d |
| 3 |  | Revisar normativo y reglamento de graduación | 8h | 2026-02-02 | 2026-02-02 |  | 0d |
| 4 |  | Delimitar el tema de investigación | 16h | 2026-02-03 | 2026-02-04 | 3 | 0d |
| 5 |  | Preparar formularios y documentación | 8h | 2026-02-05 | 2026-02-05 | 4 | 0d |
| 6 |  | Presentar solicitud formal ante la facultad | 4h | 2026-02-06 | 2026-02-06 | 5 | 0d |
| 7 |  | Período de espera — resolución institucional | 40h | 2026-02-06 | 2026-02-13 | 6 | 0d |
| 8 |  | Recibir aprobación formal del tema | 4h | 2026-02-13 | 2026-02-13 | 7 | 0d |
| 9 | 1.1.2 | **Asignación de Asesor** | 0h | 2026-02-03 | 2026-02-17 |  | 0.65d |
| 10 |  | Identificar y evaluar candidatos a asesor | 8h | 2026-02-03 | 2026-02-03 | 3 | 0.65d |
| 11 |  | Contactar y reunirse con candidatos | 8h | 2026-02-04 | 2026-02-04 | 10 | 0.65d |
| 12 |  | Seleccionar asesor definitivo | 4h | 2026-02-05 | 2026-02-05 | 11 | 0.65d |
| 13 |  | Formalizar carta de asignación del asesor | 4h | 2026-02-16 | 2026-02-16 | 8, 12 | 0d |
| 14 |  | Primera reunión de trabajo con asesor | 8h | 2026-02-16 | 2026-02-17 | 13 | 0d |
| 15 | 1.1.3 | **Plan del Proyecto** | 0h | 2026-02-17 | 2026-02-27 |  | 0d |
| 16 |  | Definir alcance, supuestos y restricciones | 16h | 2026-02-17 | 2026-02-19 | 14 | 0d |
| 17 |  | Elaborar EDT (WBS) del proyecto | 16h | 2026-02-19 | 2026-02-23 | 16 | 0d |
| 18 |  | Elaborar cronograma y línea base de tiempo | 16h | 2026-02-23 | 2026-02-25 | 17 | 0d |
| 19 |  | Identificar y evaluar riesgos | 8h | 2026-02-23 | 2026-02-24 | 17 | 0.1d |
| 20 |  | Elaborar plan de comunicación y seguimiento | 8h | 2026-02-23 | 2026-02-24 | 17 | 0.1d |
| 21 |  | Revisión y aprobación del plan con asesor | 16h | 2026-02-25 | 2026-02-27 | 18, 19, 20 | 0d |
| 22 | 1.2 | **PLANIFICACIÓN** | 0h | 2026-02-27 | 2026-04-20 | 21 | 0d |
| 23 | 1.2.1 | **Anteproyecto** | 0h | 2026-02-27 | 2026-03-27 |  | 0d |
| 24 |  | Revisión de literatura sobre el problema | 24h | 2026-02-27 | 2026-03-04 | 21 | 0d |
| 25 |  | Redactar planteamiento del problema | 24h | 2026-03-04 | 2026-03-09 | 24 | 0d |
| 26 |  | Definir objetivos general y específicos | 16h | 2026-03-09 | 2026-03-11 | 25 | 0d |
| 27 |  | Plantear hipótesis de investigación | 8h | 2026-03-11 | 2026-03-12 | 26 | 0.1d |
| 28 |  | Escribir justificación del proyecto | 16h | 2026-03-11 | 2026-03-13 | 26 | 0d |
| 29 |  | Redactar documento completo de anteproyecto | 24h | 2026-03-13 | 2026-03-18 | 27, 28 | 0d |
| 30 |  | Revisión del anteproyecto con asesor | 16h | 2026-03-18 | 2026-03-20 | 29 | 0d |
| 31 |  | Presentar anteproyecto ante comité evaluador | 8h | 2026-03-20 | 2026-03-23 | 30 | 0d |
| 32 |  | Período de espera — aprobación del comité | 32h | 2026-03-23 | 2026-03-27 | 31 | 0d |
| 33 | 1.2.2 | **Diseño Metodológico** | 0h | 2026-03-27 | 2026-04-20 |  | 0d |
| 34 |  | Revisar y comparar metodologías de investigación | 16h | 2026-03-27 | 2026-04-07 | 32 | 0d |
| 35 |  | Seleccionar y justificar metodología adoptada | 16h | 2026-04-07 | 2026-04-09 | 34 | 0d |
| 36 |  | Diseñar arquitectura general del experimento | 24h | 2026-04-09 | 2026-04-14 | 35 | 0d |
| 37 |  | Identificar y seleccionar datasets HDL / QA | 16h | 2026-04-09 | 2026-04-13 | 35 | 0.8d |
| 38 |  | Planificar pipeline de entrenamiento y evaluación | 16h | 2026-04-14 | 2026-04-16 | 36 | 0d |
| 39 |  | Definir métricas y criterios de éxito del modelo | 8h | 2026-04-14 | 2026-04-15 | 36 | 0.1d |
| 40 |  | Documentar y aprobar diseño metodológico | 16h | 2026-04-16 | 2026-04-20 | 38, 39 | 0d |
| 41 | 1.3 | **EJECUCIÓN** | 0h | 2026-04-13 | 2026-09-07 | 40 | 0d |
| 42 | 1.3.1 | **Marco Teórico** | 0h | 2026-04-20 | 2026-05-20 |  | 0d |
| 43 |  | Rev. bibliográfica: LLMs y arquitecturas Transformer | 24h | 2026-04-20 | 2026-04-23 | 40 | 0d |
| 44 |  | Rev. bibliográfica: LoRA y métodos PEFT | 32h | 2026-04-23 | 2026-04-29 | 43 | 0.2d |
| 45 |  | Rev. bibliográfica: HDL — VHDL / Verilog | 24h | 2026-04-23 | 2026-04-28 | 43 | 0d |
| 46 |  | Rev. bibliográfica: QA en diseño digital y EDA | 24h | 2026-04-28 | 2026-05-04 | 45 | 0d |
| 47 |  | Redactar sección — Fundamentos teóricos | 32h | 2026-05-04 | 2026-05-08 | 44, 46 | 0d |
| 48 |  | Redactar sección — LoRA aplicado a generación HDL | 32h | 2026-05-08 | 2026-05-14 | 47 | 0d |
| 49 |  | Redactar sección — Estado del arte | 24h | 2026-05-08 | 2026-05-13 | 47 | 0.1d |
| 50 |  | Revisión del marco teórico con asesor | 16h | 2026-05-14 | 2026-05-18 | 48, 49 | 0d |
| 51 |  | Corrección y ajuste del marco teórico | 16h | 2026-05-18 | 2026-05-20 | 50 | 0d |
| 52 | 1.3.2 | **Preprocesamiento de Datos** | 0h | 2026-04-13 | 2026-05-08 |  | 0.8d |
| 53 |  | Catalogar datasets HDL / QA disponibles | 16h | 2026-04-13 | 2026-04-15 | 37 | 0.8d |
| 54 |  | Descargar y verificar integridad de datasets | 8h | 2026-04-15 | 2026-04-16 | 53 | 0.8d |
| 55 |  | Análisis exploratorio de datos (EDA) | 16h | 2026-04-16 | 2026-04-20 | 54 | 0.8d |
| 56 |  | Limpieza y depuración de datos | 32h | 2026-04-20 | 2026-04-24 | 55 | 0.8d |
| 57 |  | Tokenización y formateo para fine-tuning LLM | 24h | 2026-04-24 | 2026-04-29 | 56 | 0.8d |
| 58 |  | Transformación y normalización de datos | 24h | 2026-04-29 | 2026-05-05 | 57 | 0.8d |
| 59 |  | Validación de calidad e integridad del dataset | 16h | 2026-05-05 | 2026-05-07 | 58 | 0.8d |
| 60 |  | Documentar pipeline de preprocesamiento | 8h | 2026-05-07 | 2026-05-08 | 59 | 0.8d |
| 61 | 1.3.3 | **Entrenamiento LoRA** | 0h | 2026-05-20 | 2026-07-02 |  | 0d |
| 62 |  | Configurar entorno Python / HuggingFace en MacBook | 16h | 2026-05-20 | 2026-05-22 | 51, 60 | 0d |
| 63 |  | Instalar y verificar librerías PEFT / LoRA | 8h | 2026-05-22 | 2026-05-25 | 62 | 0d |
| 64 |  | Seleccionar y cargar modelo base LLM | 8h | 2026-05-25 | 2026-05-26 | 63 | 0d |
| 65 |  | Implementar cargador de datos HDL personalizado | 24h | 2026-05-26 | 2026-05-29 | 64 | 0d |
| 66 |  | Configurar parámetros LoRA (r, alpha, dropout) | 16h | 2026-05-29 | 2026-06-02 | 65 | 0d |
| 67 |  | Ejecutar entrenamiento piloto (sanity check) | 16h | 2026-06-02 | 2026-06-04 | 66 | 0d |
| 68 |  | Analizar métricas de pérdida y accuracy del piloto | 16h | 2026-06-04 | 2026-06-08 | 67 | 0d |
| 69 |  | Ajustar hiperparámetros — iteración 1 | 24h | 2026-06-08 | 2026-06-11 | 68 | 0d |
| 70 |  | Ejecutar entrenamiento optimizado iteración 1 | 32h | 2026-06-11 | 2026-06-17 | 69 | 0d |

| ID | WBS | Task | Duration | Start | Finish | Predecessors | Total float |
| --- | --- | --- | --- | --- | --- | --- | --- |
| 71 |  | Ajustar hiperparámetros — iteración 2 | 24h | 2026-06-17 | 2026-06-22 | 70 | 0d |
| 72 |  | Ejecutar entrenamiento final (modelo definitivo) | 32h | 2026-06-22 | 2026-06-26 | 71 | 0d |
| 73 |  | Guardar, versionar y respaldar modelo entrenado | 8h | 2026-06-26 | 2026-06-29 | 72 | 0d |
| 74 |  | Documentar proceso de entrenamiento completo | 16h | 2026-06-29 | 2026-07-02 | 73 | 1.2d |
| 75 | 1.3.4 | **Evaluación Benchmark** | 0h | 2026-06-29 | 2026-07-20 |  | 0d |
| 76 |  | Revisar benchmarks existentes para LLM / HDL | 16h | 2026-06-29 | 2026-07-02 | 73 | 0d |
| 77 |  | Definir métricas: BLEU, exactitud sintáctica, PASS@k | 8h | 2026-07-02 | 2026-07-03 | 76 | 0d |
| 78 |  | Implementar scripts de evaluación automatizada | 24h | 2026-07-03 | 2026-07-08 | 77 | 0d |
| 79 |  | Ejecutar benchmark — modelo LoRA fine-tuned | 24h | 2026-07-08 | 2026-07-13 | 78 | 0d |
| 80 |  | Ejecutar benchmark — modelo base (baseline) | 16h | 2026-07-08 | 2026-07-10 | 78 | 0.1d |
| 81 |  | Comparar y analizar: LoRA vs baseline | 24h | 2026-07-13 | 2026-07-16 | 79, 80 | 0d |
| 82 |  | Documentar resultados del benchmark | 16h | 2026-07-16 | 2026-07-20 | 81 | 0d |
| 83 | 1.3.5 | **Análisis de Resultados** | 0h | 2026-07-20 | 2026-08-05 |  | 0d |
| 84 |  | Compilar y consolidar todas las métricas | 8h | 2026-07-20 | 2026-07-21 | 82, 74 | 0d |
| 85 |  | Análisis estadístico descriptivo de resultados | 16h | 2026-07-21 | 2026-07-23 | 84 | 0d |
| 86 |  | Visualizar resultados (gráficas y tablas) | 16h | 2026-07-23 | 2026-07-27 | 85 | 0d |
| 87 |  | Comparar con modelos del estado del arte | 24h | 2026-07-27 | 2026-07-30 | 86 | 0d |
| 88 |  | Identificar fortalezas, limitaciones y trabajo futuro | 16h | 2026-07-30 | 2026-08-03 | 87 | 0d |
| 89 |  | Redactar análisis e interpretación de resultados | 16h | 2026-08-03 | 2026-08-05 | 88 | 0d |
| 90 | 1.3.6 | **Redacción del Informe Final** | 0h | 2026-08-05 | 2026-09-07 |  | 0d |
| 91 |  | Definir estructura y capítulos del informe | 8h | 2026-08-05 | 2026-08-06 | 89 | 0d |
| 92 |  | Redactar cap. 1 — Introducción | 16h | 2026-08-06 | 2026-08-10 | 91 | 0.1d |
| 93 |  | Integrar cap. 2 — Marco teórico (ajustar) | 16h | 2026-08-06 | 2026-08-10 | 91 | 0.1d |
| 94 |  | Redactar cap. 3 — Metodología | 24h | 2026-08-06 | 2026-08-11 | 91 | 0d |
| 95 |  | Redactar cap. 4 — Resultados y análisis | 24h | 2026-08-06 | 2026-08-11 | 91 | 0d |
| 96 |  | Redactar cap. 5 — Conclusiones y recomendaciones | 16h | 2026-08-11 | 2026-08-13 | 92, 93, 94, 95 | 0d |
| 97 |  | Elaborar referencias bibliográficas (APA / IEEE) | 8h | 2026-08-13 | 2026-08-14 | 96 | 0d |
| 98 |  | Revisar formato y estilo según normativo UNIS | 16h | 2026-08-14 | 2026-08-18 | 97 | 0d |
| 99 |  | Primera revisión con asesor (espera retroalim.) | 24h | 2026-08-18 | 2026-08-21 | 98 | 0d |
| 100 |  | Aplicar primera ronda de correcciones | 24h | 2026-08-21 | 2026-08-26 | 99 | 0d |
| 101 |  | Segunda revisión con asesor (espera retroalim.) | 40h | 2026-08-26 | 2026-09-02 | 100 | 0d |
| 102 |  | Aplicar segunda ronda de correcciones | 24h | 2026-09-02 | 2026-09-07 | 101 | 0d |
| 103 | 1.4 | **MONITOREO Y CONTROL** | 0h | 2026-02-27 | 2026-03-16 |  | 0d |
| 104 | 1.4.1 | **Seguimiento** | 0h | 2026-02-27 | 2026-03-16 |  | 13.95d |
| 105 |  | Planificar agenda y protocolo de reuniones | 8h | 2026-02-27 | 2026-03-02 | 21 | 13.95d |
| 106 |  | Conducir reuniones semanales con asesor | 80h | 2026-03-02 | 2026-03-16 | 105 | 13.95d |
| 107 |  | Elaborar reportes de avance mensuales | 40h | 2026-03-02 | 2026-03-09 | 105 | 14.45d |
| 108 |  | Actualizar y monitorear cronograma del proyecto | 16h | 2026-03-02 | 2026-03-04 | 105 | 14.75d |
| 109 | 1.4.2 | **Control de Cambios** | 0h | 2026-03-02 | 2026-03-13 |  | 14.05d |
| 110 |  | Registrar solicitudes de cambio formales | 16h | 2026-03-02 | 2026-03-04 | 105 | 14.05d |
| 111 |  | Evaluar y aprobar cambios con asesor | 16h | 2026-03-04 | 2026-03-06 | 110 | 14.05d |
| 112 |  | Implementar cambios aprobados | 24h | 2026-03-06 | 2026-03-11 | 111 | 14.05d |
| 113 |  | Documentar lecciones aprendidas | 16h | 2026-03-11 | 2026-03-13 | 112 | 14.05d |
| 114 | 1.5 | **CIERRE** | 0h | 2026-09-07 | 2026-10-08 | 102 | 0d |
| 115 | 1.5.1 | **Correcciones Finales** | 0h | 2026-09-07 | 2026-09-22 |  | 0d |
| 116 |  | Recibir retroalimentación final del asesor | 8h | 2026-09-07 | 2026-09-08 | 102 | 0d |
| 117 |  | Aplicar correcciones finales al documento | 24h | 2026-09-08 | 2026-09-11 | 116 | 0d |
| 118 |  | Revisión de ortografía, gramática y estilo | 8h | 2026-09-11 | 2026-09-14 | 117 | 0d |
| 119 |  | Formatear documento final según normativo UNIS | 16h | 2026-09-14 | 2026-09-17 | 118 | 0d |
| 120 |  | Aprobación final y firma del asesor | 24h | 2026-09-17 | 2026-09-22 | 119 | 0d |
| 121 | 1.5.2 | **Defensa Pública** | 0h | 2026-09-22 | 2026-10-02 |  | 0d |
| 122 |  | Preparar presentación PowerPoint para defensa | 16h | 2026-09-22 | 2026-09-24 | 120 | 0d |
| 123 |  | Elaborar material de apoyo y demo técnico | 8h | 2026-09-24 | 2026-09-25 | 122 | 0d |
| 124 |  | Realizar ensayos de presentación (mínimo 3) | 8h | 2026-09-25 | 2026-09-28 | 123 | 0d |
| 125 |  | Defensa oral ante el jurado evaluador | 8h | 2026-09-28 | 2026-09-29 | 124 | 0d |
| 126 |  | Período de espera — resolución y nota del jurado | 24h | 2026-09-29 | 2026-10-02 | 125 | 0d |
| 127 | 1.5.3 | **Entrega y Cierre** | 0h | 2026-10-02 | 2026-10-08 |  | 0d |
| 128 |  | Aplicar correcciones indicadas por el jurado | 16h | 2026-10-02 | 2026-10-06 | 126 | 0d |
| 129 |  | Imprimir, empastar y preparar copias finales | 4h | 2026-10-06 | 2026-10-06 | 128 | 0d |
| 130 |  | Entrega formal a biblioteca y facultad | 4h | 2026-10-07 | 2026-10-07 | 129 | 0d |
| 131 |  | Cierre administrativo del proyecto | 4h | 2026-10-07 | 2026-10-07 | 130 | 0d |
| 132 |  | HITO — Proyecto de Graduación Completado | 0h | 2026-10-08 | 2026-10-08 | 131 | 0d |

## Version 2 (saved 2026-04-07)

Note of the change: fix: remove Exceptions from Guatemala calendar to fix ProjectLibre blank screen

Last finish 2026-10-08 → 2026-09-25 (-13d).

Added:

| ID | Task | Duration | Start | Finish |
| --- | --- | --- | --- | --- |
| 1 | **Proyecto de Graduación LoRA-HDL-QA** | 170d | 2026-02-02 | 2026-09-25 |

Changed:

| ID | Task | Start | Finish | Duration | Total float | Other |
| --- | --- | --- | --- | --- | --- | --- |
| 2 | **INICIO** |  |  | 0h → 19.5d | 0d → none |  |
| 3 | **Inscripción del Tema** |  |  | 0h → 10d | 0d → none |  |
| 4 | Revisar normativo y reglamento de graduación |  |  | 8h → 1d | 0d → none |  |
| 5 | Delimitar el tema de investigación |  |  | 16h → 2d | 0d → none |  |
| 6 | Preparar formularios y documentación |  |  | 8h → 1d | 0d → none |  |
| 7 | Presentar solicitud formal ante la facultad |  |  | 4h → 0.38d | 0d → none |  |
| 8 | Período de espera — resolución institucional |  |  | 40h → 4.88d | 0d → none | constraint none → start no later than 2026-02-06 |
| 9 | Recibir aprobación formal del tema |  |  | 4h → 0.5d | 0d → none | constraint none → start no later than 2026-02-13 |
| 10 | **Asignación de Asesor** |  |  | 0h → 10.5d | 0.65d → none |  |
| 11 | Identificar y evaluar candidatos a asesor |  |  | 8h → 1d | 0.65d → none |  |
| 12 | Contactar y reunirse con candidatos |  |  | 8h → 1d | 0.65d → none |  |
| 13 | Seleccionar asesor definitivo |  |  | 4h → 0.38d | 0.65d → none |  |
| 14 | Formalizar carta de asignación del asesor |  |  | 4h → 0.38d | 0d → none |  |
| 15 | Primera reunión de trabajo con asesor |  |  | 8h → 0.88d | 0d → none | constraint none → start no later than 2026-02-16 |
| 16 | **Plan del Proyecto** |  |  | 0h → 8d | 0d → none |  |
| 17 | Definir alcance, supuestos y restricciones |  |  | 16h → 1.88d | 0d → none | constraint none → start no later than 2026-02-17 |
| 18 | Elaborar EDT (WBS) del proyecto |  |  | 16h → 1.88d | 0d → none | constraint none → start no later than 2026-02-19 |
| 19 | Elaborar cronograma y línea base de tiempo |  |  | 16h → 1.88d | 0d → none | constraint none → start no later than 2026-02-23 |
| 20 | Identificar y evaluar riesgos |  |  | 8h → 0.88d | 0.1d → none | constraint none → start no later than 2026-02-23 |
| 21 | Elaborar plan de comunicación y seguimiento |  |  | 8h → 0.88d | 0.1d → none | constraint none → start no later than 2026-02-23 |
| 22 | Revisión y aprobación del plan con asesor |  |  | 16h → 1.88d | 0d → none | constraint none → start no later than 2026-02-25 |
| 23 | **PLANIFICACIÓN** |  | 2026-04-20 → 2026-04-13 (-7d) | 0h → 31d | 0d → none |  |
| 24 | **Anteproyecto** |  |  | 0h → 20d | 0d → none |  |
| 25 | Revisión de literatura sobre el problema |  |  | 24h → 2.88d | 0d → none | constraint none → start no later than 2026-02-27 |
| 26 | Redactar planteamiento del problema |  |  | 24h → 2.88d | 0d → none | constraint none → start no later than 2026-03-04; resources Pablo Flores; MacBook M1 2020 [1 unidad] → Pablo Flores; MacBook M1 2020 |
| 27 | Definir objetivos general y específicos |  |  | 16h → 1.88d | 0d → none | constraint none → start no later than 2026-03-09 |
| 28 | Plantear hipótesis de investigación |  |  | 8h → 0.88d | 0.1d → none | constraint none → start no later than 2026-03-11 |
| 29 | Escribir justificación del proyecto |  |  | 16h → 1.88d | 0d → none | constraint none → start no later than 2026-03-11 |
| 30 | Redactar documento completo de anteproyecto |  |  | 24h → 2.88d | 0d → none | constraint none → start no later than 2026-03-13; resources Pablo Flores; MacBook M1 2020 [1 unidad] → Pablo Flores; MacBook M1 2020 |
| 31 | Revisión del anteproyecto con asesor |  |  | 16h → 1.88d | 0d → none | constraint none → start no later than 2026-03-18 |
| 32 | Presentar anteproyecto ante comité evaluador |  |  | 8h → 0.88d | 0d → none | constraint none → start no later than 2026-03-20 |
| 33 | Período de espera — aprobación del comité |  |  | 32h → 3.88d | 0d → none | constraint none → start no later than 2026-03-23 |
| 34 | **Diseño Metodológico** |  | 2026-04-20 → 2026-04-13 (-7d) | 0h → 11d | 0d → none |  |
| 35 | Revisar y comparar metodologías de investigación |  | 2026-04-07 → 2026-03-31 (-7d) | 16h → 1.88d | 0d → none | constraint none → start no later than 2026-03-27 |
| 36 | Seleccionar y justificar metodología adoptada | 2026-04-07 → 2026-03-31 (-7d) | 2026-04-09 → 2026-04-02 (-7d) | 16h → 1.88d | 0d → none | constraint none → start no later than 2026-03-31 |
| 37 | Diseñar arquitectura general del experimento | 2026-04-09 → 2026-04-02 (-7d) | 2026-04-14 → 2026-04-07 (-7d) | 24h → 2.88d | 0d → none | constraint none → start no later than 2026-04-02 |
| 38 | Identificar y seleccionar datasets HDL / QA | 2026-04-09 → 2026-04-02 (-7d) | 2026-04-13 → 2026-04-06 (-7d) | 16h → 1.88d | 0.8d → none | constraint none → start no later than 2026-04-02; resources Pablo Flores; MacBook M1 2020 [1 unidad] → Pablo Flores; MacBook M1 2020 |
| 39 | Planificar pipeline de entrenamiento y evaluación | 2026-04-14 → 2026-04-07 (-7d) | 2026-04-16 → 2026-04-09 (-7d) | 16h → 1.88d | 0d → none | constraint none → start no later than 2026-04-07; resources Pablo Flores; MacBook M1 2020 [1 unidad] → Pablo Flores; MacBook M1 2020 |
| 40 | Definir métricas y criterios de éxito del modelo | 2026-04-14 → 2026-04-07 (-7d) | 2026-04-15 → 2026-04-08 (-7d) | 8h → 0.88d | 0.1d → none | constraint none → start no later than 2026-04-07; resources Pablo Flores; MacBook M1 2020 [1 unidad] → Pablo Flores; MacBook M1 2020 |
| 41 | Documentar y aprobar diseño metodológico | 2026-04-16 → 2026-04-09 (-7d) | 2026-04-20 → 2026-04-13 (-7d) | 16h → 1.88d | 0d → none | constraint none → start no later than 2026-04-09 |
| 42 | **EJECUCIÓN** |  | 2026-09-07 → 2026-08-27 (-11d) | 0h → 98d | 0d → none |  |
| 43 | **Marco Teórico** | 2026-04-20 → 2026-04-13 (-7d) | 2026-05-20 → 2026-05-12 (-8d) | 0h → 21d | 0d → none |  |
| 44 | Rev. bibliográfica: LLMs y arquitecturas Transformer | 2026-04-20 → 2026-04-13 (-7d) | 2026-04-23 → 2026-04-16 (-7d) | 24h → 2.88d | 0d → none | constraint none → start no later than 2026-04-13; resources Pablo Flores; MacBook M1 2020 [1 unidad] → Pablo Flores; MacBook M1 2020 |
| 45 | Rev. bibliográfica: LoRA y métodos PEFT | 2026-04-23 → 2026-04-16 (-7d) | 2026-04-29 → 2026-04-22 (-7d) | 32h → 3.88d | 0.2d → none | constraint none → start no later than 2026-04-16 |
| 46 | Rev. bibliográfica: HDL — VHDL / Verilog | 2026-04-23 → 2026-04-16 (-7d) | 2026-04-28 → 2026-04-21 (-7d) | 24h → 2.88d | 0d → none | constraint none → start no later than 2026-04-16 |
| 47 | Rev. bibliográfica: QA en diseño digital y EDA | 2026-04-28 → 2026-04-21 (-7d) | 2026-05-04 → 2026-04-24 (-10d) | 24h → 2.88d | 0d → none | constraint none → start no later than 2026-04-21; resources Pablo Flores; MacBook M1 2020 [1 unidad] → Pablo Flores; MacBook M1 2020 |
| 48 | Redactar sección — Fundamentos teóricos | 2026-05-04 → 2026-04-24 (-10d) | 2026-05-08 → 2026-04-30 (-8d) | 32h → 3.88d | 0d → none | constraint none → start no later than 2026-04-24; resources Pablo Flores; MacBook M1 2020 [1 unidad] → Pablo Flores; MacBook M1 2020 |
| 49 | Redactar sección — LoRA aplicado a generación HDL | 2026-05-08 → 2026-04-30 (-8d) | 2026-05-14 → 2026-05-06 (-8d) | 32h → 3.88d | 0d → none | constraint none → start no later than 2026-04-30; resources Pablo Flores; MacBook M1 2020 [1 unidad] → Pablo Flores; MacBook M1 2020 |
| 50 | Redactar sección — Estado del arte | 2026-05-08 → 2026-04-30 (-8d) | 2026-05-13 → 2026-05-05 (-8d) | 24h → 2.88d | 0.1d → none | constraint none → start no later than 2026-04-30; resources Pablo Flores; MacBook M1 2020 [1 unidad] → Pablo Flores; MacBook M1 2020 |
| 51 | Revisión del marco teórico con asesor | 2026-05-14 → 2026-05-06 (-8d) | 2026-05-18 → 2026-05-08 (-10d) | 16h → 1.88d | 0d → none | constraint none → start no later than 2026-05-06 |
| 52 | Corrección y ajuste del marco teórico | 2026-05-18 → 2026-05-08 (-10d) | 2026-05-20 → 2026-05-12 (-8d) | 16h → 1.88d | 0d → none | constraint none → start no later than 2026-05-08 |
| 53 | **Preprocesamiento de Datos** |  | 2026-05-08 → 2026-05-07 (-1d) | 0h → 18d | 0.8d → none |  |
| 54 | Catalogar datasets HDL / QA disponibles |  |  | 16h → 1.88d | 0.8d → none | constraint none → start no later than 2026-04-13; resources Pablo Flores; MacBook M1 2020 [1 unidad] → Pablo Flores; MacBook M1 2020 |
| 55 | Descargar y verificar integridad de datasets |  |  | 8h → 0.88d | 0.8d → none | constraint none → start no later than 2026-04-15; resources Pablo Flores; MacBook M1 2020 [1 unidad] → Pablo Flores; MacBook M1 2020 |
| 56 | Análisis exploratorio de datos (EDA) |  |  | 16h → 1.88d | 0.8d → none | constraint none → start no later than 2026-04-16; resources Pablo Flores; MacBook M1 2020 [1 unidad] → Pablo Flores; MacBook M1 2020 |
| 57 | Limpieza y depuración de datos |  |  | 32h → 3.88d | 0.8d → none | constraint none → start no later than 2026-04-20 |
| 58 | Tokenización y formateo para fine-tuning LLM |  |  | 24h → 2.88d | 0.8d → none | constraint none → start no later than 2026-04-24; resources Pablo Flores; MacBook M1 2020 [1 unidad] → Pablo Flores; MacBook M1 2020 |
| 59 | Transformación y normalización de datos |  | 2026-05-05 → 2026-05-04 (-1d) | 24h → 2.88d | 0.8d → none | constraint none → start no later than 2026-04-29; resources Pablo Flores; MacBook M1 2020 [1 unidad] → Pablo Flores; MacBook M1 2020 |
| 60 | Validación de calidad e integridad del dataset | 2026-05-05 → 2026-05-04 (-1d) | 2026-05-07 → 2026-05-06 (-1d) | 16h → 1.88d | 0.8d → none | constraint none → start no later than 2026-05-04; resources Pablo Flores; MacBook M1 2020 [1 unidad] → Pablo Flores; MacBook M1 2020 |
| 61 | Documentar pipeline de preprocesamiento | 2026-05-07 → 2026-05-06 (-1d) | 2026-05-08 → 2026-05-07 (-1d) | 8h → 0.88d | 0.8d → none | constraint none → start no later than 2026-05-06 |
| 62 | **Entrenamiento LoRA** | 2026-05-20 → 2026-05-12 (-8d) | 2026-07-02 → 2026-06-23 (-9d) | 0h → 30d | 0d → none |  |
| 63 | Configurar entorno Python / HuggingFace en MacBook | 2026-05-20 → 2026-05-12 (-8d) | 2026-05-22 → 2026-05-14 (-8d) | 16h → 1.88d | 0d → none | constraint none → start no later than 2026-05-12; resources Pablo Flores; MacBook M1 2020 [1 unidad] → Pablo Flores; MacBook M1 2020 |
| 64 | Instalar y verificar librerías PEFT / LoRA | 2026-05-22 → 2026-05-14 (-8d) | 2026-05-25 → 2026-05-15 (-10d) | 8h → 0.88d | 0d → none | constraint none → start no later than 2026-05-14; resources Pablo Flores; MacBook M1 2020 [1 unidad] → Pablo Flores; MacBook M1 2020 |
| 65 | Seleccionar y cargar modelo base LLM | 2026-05-25 → 2026-05-15 (-10d) | 2026-05-26 → 2026-05-18 (-8d) | 8h → 0.88d | 0d → none | constraint none → start no later than 2026-05-15; resources Pablo Flores; MacBook M1 2020 [1 unidad] → Pablo Flores; MacBook M1 2020 |
| 66 | Implementar cargador de datos HDL personalizado | 2026-05-26 → 2026-05-18 (-8d) | 2026-05-29 → 2026-05-21 (-8d) | 24h → 2.88d | 0d → none | constraint none → start no later than 2026-05-18; resources Pablo Flores; MacBook M1 2020 [1 unidad] → Pablo Flores; MacBook M1 2020 |
| 67 | Configurar parámetros LoRA (r, alpha, dropout) | 2026-05-29 → 2026-05-21 (-8d) | 2026-06-02 → 2026-05-25 (-8d) | 16h → 1.88d | 0d → none | constraint none → start no later than 2026-05-21; resources Pablo Flores; MacBook M1 2020 [1 unidad] → Pablo Flores; MacBook M1 2020 |
| 68 | Ejecutar entrenamiento piloto (sanity check) | 2026-06-02 → 2026-05-25 (-8d) | 2026-06-04 → 2026-05-27 (-8d) | 16h → 1.88d | 0d → none | constraint none → start no later than 2026-05-25; resources Pablo Flores; MacBook M1 2020 [1 unidad] → Pablo Flores; MacBook M1 2020 |
| 69 | Analizar métricas de pérdida y accuracy del piloto | 2026-06-04 → 2026-05-27 (-8d) | 2026-06-08 → 2026-05-29 (-10d) | 16h → 1.88d | 0d → none | constraint none → start no later than 2026-05-27; resources Pablo Flores; MacBook M1 2020 [1 unidad] → Pablo Flores; MacBook M1 2020 |
| 70 | Ajustar hiperparámetros — iteración 1 | 2026-06-08 → 2026-05-29 (-10d) | 2026-06-11 → 2026-06-03 (-8d) | 24h → 2.88d | 0d → none | constraint none → start no later than 2026-05-29 |
| 71 | Ejecutar entrenamiento optimizado iteración 1 | 2026-06-11 → 2026-06-03 (-8d) | 2026-06-17 → 2026-06-09 (-8d) | 32h → 3.88d | 0d → none | constraint none → start no later than 2026-06-03; resources Pablo Flores; MacBook M1 2020 [1 unidad] → Pablo Flores; MacBook M1 2020 |

| ID | Task | Start | Finish | Duration | Total float | Other |
| --- | --- | --- | --- | --- | --- | --- |
| 72 | Ajustar hiperparámetros — iteración 2 | 2026-06-17 → 2026-06-09 (-8d) | 2026-06-22 → 2026-06-12 (-10d) | 24h → 2.88d | 0d → none | constraint none → start no later than 2026-06-09 |
| 73 | Ejecutar entrenamiento final (modelo definitivo) | 2026-06-22 → 2026-06-12 (-10d) | 2026-06-26 → 2026-06-18 (-8d) | 32h → 3.88d | 0d → none | constraint none → start no later than 2026-06-12; resources Pablo Flores; MacBook M1 2020 [1 unidad] → Pablo Flores; MacBook M1 2020 |
| 74 | Guardar, versionar y respaldar modelo entrenado | 2026-06-26 → 2026-06-18 (-8d) | 2026-06-29 → 2026-06-19 (-10d) | 8h → 0.88d | 0d → none | constraint none → start no later than 2026-06-18; resources Pablo Flores; MacBook M1 2020 [1 unidad] → Pablo Flores; MacBook M1 2020 |
| 75 | Documentar proceso de entrenamiento completo | 2026-06-29 → 2026-06-19 (-10d) | 2026-07-02 → 2026-06-23 (-9d) | 16h → 1.88d | 1.2d → none | constraint none → start no later than 2026-06-19; resources Pablo Flores; MacBook M1 2020 [1 unidad] → Pablo Flores; MacBook M1 2020 |
| 76 | **Evaluación Benchmark** | 2026-06-29 → 2026-06-19 (-10d) | 2026-07-20 → 2026-07-09 (-11d) | 0h → 14d | 0d → none |  |
| 77 | Revisar benchmarks existentes para LLM / HDL | 2026-06-29 → 2026-06-19 (-10d) | 2026-07-02 → 2026-06-23 (-9d) | 16h → 1.88d | 0d → none | constraint none → start no later than 2026-06-19; resources Pablo Flores; MacBook M1 2020 [1 unidad] → Pablo Flores; MacBook M1 2020 |
| 78 | Definir métricas: BLEU, exactitud sintáctica, PASS@k | 2026-07-02 → 2026-06-23 (-9d) | 2026-07-03 → 2026-06-24 (-9d) | 8h → 0.88d | 0d → none | constraint none → start no later than 2026-06-23 |
| 79 | Implementar scripts de evaluación automatizada | 2026-07-03 → 2026-06-24 (-9d) | 2026-07-08 → 2026-06-29 (-9d) | 24h → 2.88d | 0d → none | constraint none → start no later than 2026-06-24; resources Pablo Flores; MacBook M1 2020 [1 unidad] → Pablo Flores; MacBook M1 2020 |
| 80 | Ejecutar benchmark — modelo LoRA fine-tuned | 2026-07-08 → 2026-06-29 (-9d) | 2026-07-13 → 2026-07-02 (-11d) | 24h → 2.88d | 0d → none | constraint none → start no later than 2026-06-29; resources Pablo Flores; MacBook M1 2020 [1 unidad] → Pablo Flores; MacBook M1 2020 |
| 81 | Ejecutar benchmark — modelo base (baseline) | 2026-07-08 → 2026-06-29 (-9d) | 2026-07-10 → 2026-07-01 (-9d) | 16h → 1.88d | 0.1d → none | constraint none → start no later than 2026-06-29; resources Pablo Flores; MacBook M1 2020 [1 unidad] → Pablo Flores; MacBook M1 2020 |
| 82 | Comparar y analizar: LoRA vs baseline | 2026-07-13 → 2026-07-02 (-11d) | 2026-07-16 → 2026-07-07 (-9d) | 24h → 2.88d | 0d → none | constraint none → start no later than 2026-07-02; resources Pablo Flores; MacBook M1 2020 [1 unidad] → Pablo Flores; MacBook M1 2020 |
| 83 | Documentar resultados del benchmark | 2026-07-16 → 2026-07-07 (-9d) | 2026-07-20 → 2026-07-09 (-11d) | 16h → 1.88d | 0d → none | constraint none → start no later than 2026-07-07; resources Pablo Flores; MacBook M1 2020 [1 unidad] → Pablo Flores; MacBook M1 2020 |
| 84 | **Análisis de Resultados** | 2026-07-20 → 2026-07-09 (-11d) | 2026-08-05 → 2026-07-27 (-9d) | 0h → 12d | 0d → none |  |
| 85 | Compilar y consolidar todas las métricas | 2026-07-20 → 2026-07-09 (-11d) | 2026-07-21 → 2026-07-10 (-11d) | 8h → 0.88d | 0d → none | constraint none → start no later than 2026-07-09 |
| 86 | Análisis estadístico descriptivo de resultados | 2026-07-21 → 2026-07-10 (-11d) | 2026-07-23 → 2026-07-14 (-9d) | 16h → 1.88d | 0d → none | constraint none → start no later than 2026-07-10 |
| 87 | Visualizar resultados (gráficas y tablas) | 2026-07-23 → 2026-07-14 (-9d) | 2026-07-27 → 2026-07-16 (-11d) | 16h → 1.88d | 0d → none | constraint none → start no later than 2026-07-14; resources Pablo Flores; MacBook M1 2020 [1 unidad] → Pablo Flores; MacBook M1 2020 |
| 88 | Comparar con modelos del estado del arte | 2026-07-27 → 2026-07-16 (-11d) | 2026-07-30 → 2026-07-21 (-9d) | 24h → 2.88d | 0d → none | constraint none → start no later than 2026-07-16; resources Pablo Flores; MacBook M1 2020 [1 unidad] → Pablo Flores; MacBook M1 2020 |
| 89 | Identificar fortalezas, limitaciones y trabajo futuro | 2026-07-30 → 2026-07-21 (-9d) | 2026-08-03 → 2026-07-23 (-11d) | 16h → 1.88d | 0d → none | constraint none → start no later than 2026-07-21 |
| 90 | Redactar análisis e interpretación de resultados | 2026-08-03 → 2026-07-23 (-11d) | 2026-08-05 → 2026-07-27 (-9d) | 16h → 1.88d | 0d → none | constraint none → start no later than 2026-07-23; resources Pablo Flores; MacBook M1 2020 [1 unidad] → Pablo Flores; MacBook M1 2020 |
| 91 | **Redacción del Informe Final** | 2026-08-05 → 2026-07-27 (-9d) | 2026-09-07 → 2026-08-27 (-11d) | 0h → 23d | 0d → none |  |
| 92 | Definir estructura y capítulos del informe | 2026-08-05 → 2026-07-27 (-9d) | 2026-08-06 → 2026-07-28 (-9d) | 8h → 0.88d | 0d → none | constraint none → start no later than 2026-07-27 |
| 93 | Redactar cap. 1 — Introducción | 2026-08-06 → 2026-07-28 (-9d) | 2026-08-10 → 2026-07-30 (-11d) | 16h → 1.88d | 0.1d → none | constraint none → start no later than 2026-07-28; resources Pablo Flores; MacBook M1 2020 [1 unidad] → Pablo Flores; MacBook M1 2020 |
| 94 | Integrar cap. 2 — Marco teórico (ajustar) | 2026-08-06 → 2026-07-28 (-9d) | 2026-08-10 → 2026-07-30 (-11d) | 16h → 1.88d | 0.1d → none | constraint none → start no later than 2026-07-28 |
| 95 | Redactar cap. 3 — Metodología | 2026-08-06 → 2026-07-28 (-9d) | 2026-08-11 → 2026-07-31 (-11d) | 24h → 2.88d | 0d → none | constraint none → start no later than 2026-07-28; resources Pablo Flores; MacBook M1 2020 [1 unidad] → Pablo Flores; MacBook M1 2020 |
| 96 | Redactar cap. 4 — Resultados y análisis | 2026-08-06 → 2026-07-28 (-9d) | 2026-08-11 → 2026-07-31 (-11d) | 24h → 2.88d | 0d → none | constraint none → start no later than 2026-07-28; resources Pablo Flores; MacBook M1 2020 [1 unidad] → Pablo Flores; MacBook M1 2020 |
| 97 | Redactar cap. 5 — Conclusiones y recomendaciones | 2026-08-11 → 2026-07-31 (-11d) | 2026-08-13 → 2026-08-04 (-9d) | 16h → 1.88d | 0d → none | constraint none → start no later than 2026-07-31; resources Pablo Flores; MacBook M1 2020 [1 unidad] → Pablo Flores; MacBook M1 2020 |
| 98 | Elaborar referencias bibliográficas (APA / IEEE) | 2026-08-13 → 2026-08-04 (-9d) | 2026-08-14 → 2026-08-05 (-9d) | 8h → 0.88d | 0d → none | constraint none → start no later than 2026-08-04 |
| 99 | Revisar formato y estilo según normativo UNIS | 2026-08-14 → 2026-08-05 (-9d) | 2026-08-18 → 2026-08-07 (-11d) | 16h → 1.88d | 0d → none | constraint none → start no later than 2026-08-05; resources Pablo Flores; MacBook M1 2020 [1 unidad] → Pablo Flores; MacBook M1 2020 |
| 100 | Primera revisión con asesor (espera retroalim.) | 2026-08-18 → 2026-08-07 (-11d) | 2026-08-21 → 2026-08-12 (-9d) | 24h → 2.88d | 0d → none | constraint none → start no later than 2026-08-07 |
| 101 | Aplicar primera ronda de correcciones | 2026-08-21 → 2026-08-12 (-9d) | 2026-08-26 → 2026-08-17 (-9d) | 24h → 2.88d | 0d → none | constraint none → start no later than 2026-08-12 |
| 102 | Segunda revisión con asesor (espera retroalim.) | 2026-08-26 → 2026-08-17 (-9d) | 2026-09-02 → 2026-08-24 (-9d) | 40h → 4.88d | 0d → none | constraint none → start no later than 2026-08-17 |
| 103 | Aplicar segunda ronda de correcciones | 2026-09-02 → 2026-08-24 (-9d) | 2026-09-07 → 2026-08-27 (-11d) | 24h → 2.88d | 0d → none | constraint none → start no later than 2026-08-24 |
| 104 | **MONITOREO Y CONTROL** |  |  | 0h → 11d | 0d → none |  |
| 105 | **Seguimiento** |  |  | 0h → 11d | 13.95d → none |  |
| 106 | Planificar agenda y protocolo de reuniones |  |  | 8h → 0.88d | 13.95d → none | constraint none → start no later than 2026-02-27 |
| 107 | Conducir reuniones semanales con asesor |  |  | 80h → 9.88d | 13.95d → none | constraint none → start no later than 2026-03-02 |
| 108 | Elaborar reportes de avance mensuales |  |  | 40h → 4.88d | 14.45d → none | constraint none → start no later than 2026-03-02 |
| 109 | Actualizar y monitorear cronograma del proyecto |  |  | 16h → 1.88d | 14.75d → none | constraint none → start no later than 2026-03-02 |
| 110 | **Control de Cambios** |  |  | 0h → 9d | 14.05d → none |  |
| 111 | Registrar solicitudes de cambio formales |  |  | 16h → 1.88d | 14.05d → none | constraint none → start no later than 2026-03-02 |
| 112 | Evaluar y aprobar cambios con asesor |  |  | 16h → 1.88d | 14.05d → none | constraint none → start no later than 2026-03-04 |
| 113 | Implementar cambios aprobados |  |  | 24h → 2.88d | 14.05d → none | constraint none → start no later than 2026-03-06; resources Pablo Flores; MacBook M1 2020 [1 unidad] → Pablo Flores; MacBook M1 2020 |
| 114 | Documentar lecciones aprendidas |  |  | 16h → 1.88d | 14.05d → none | constraint none → start no later than 2026-03-11 |
| 115 | **CIERRE** | 2026-09-07 → 2026-08-27 (-11d) | 2026-10-08 → 2026-09-25 (-13d) | 0h → 21.5d | 0d → none |  |
| 116 | **Correcciones Finales** | 2026-09-07 → 2026-08-27 (-11d) | 2026-09-22 → 2026-09-10 (-12d) | 0h → 10d | 0d → none |  |
| 117 | Recibir retroalimentación final del asesor | 2026-09-07 → 2026-08-27 (-11d) | 2026-09-08 → 2026-08-28 (-11d) | 8h → 0.88d | 0d → none | constraint none → start no later than 2026-08-27 |
| 118 | Aplicar correcciones finales al documento | 2026-09-08 → 2026-08-28 (-11d) | 2026-09-11 → 2026-09-02 (-9d) | 24h → 2.88d | 0d → none | constraint none → start no later than 2026-08-28 |
| 119 | Revisión de ortografía, gramática y estilo | 2026-09-11 → 2026-09-02 (-9d) | 2026-09-14 → 2026-09-03 (-11d) | 8h → 0.88d | 0d → none | constraint none → start no later than 2026-09-02 |
| 120 | Formatear documento final según normativo UNIS | 2026-09-14 → 2026-09-03 (-11d) | 2026-09-17 → 2026-09-07 (-10d) | 16h → 1.88d | 0d → none | constraint none → start no later than 2026-09-03 |
| 121 | Aprobación final y firma del asesor | 2026-09-17 → 2026-09-07 (-10d) | 2026-09-22 → 2026-09-10 (-12d) | 24h → 2.88d | 0d → none | constraint none → start no later than 2026-09-07 |
| 122 | **Defensa Pública** | 2026-09-22 → 2026-09-10 (-12d) | 2026-10-02 → 2026-09-22 (-10d) | 0h → 8d | 0d → none |  |
| 123 | Preparar presentación PowerPoint para defensa | 2026-09-22 → 2026-09-10 (-12d) | 2026-09-24 → 2026-09-14 (-10d) | 16h → 1.88d | 0d → none | constraint none → start no later than 2026-09-10; resources Pablo Flores; MacBook M1 2020 [1 unidad] → Pablo Flores; MacBook M1 2020 |
| 124 | Elaborar material de apoyo y demo técnico | 2026-09-24 → 2026-09-14 (-10d) | 2026-09-25 → 2026-09-15 (-10d) | 8h → 0.88d | 0d → none | constraint none → start no later than 2026-09-14; resources Pablo Flores; MacBook M1 2020 [1 unidad] → Pablo Flores; MacBook M1 2020 |
| 125 | Realizar ensayos de presentación (mínimo 3) | 2026-09-25 → 2026-09-15 (-10d) | 2026-09-28 → 2026-09-16 (-12d) | 8h → 0.88d | 0d → none | constraint none → start no later than 2026-09-15 |
| 126 | Defensa oral ante el jurado evaluador | 2026-09-28 → 2026-09-16 (-12d) | 2026-09-29 → 2026-09-17 (-12d) | 8h → 0.88d | 0d → none | constraint none → start no later than 2026-09-16 |
| 127 | Período de espera — resolución y nota del jurado | 2026-09-29 → 2026-09-17 (-12d) | 2026-10-02 → 2026-09-22 (-10d) | 24h → 2.88d | 0d → none | constraint none → start no later than 2026-09-17 |
| 128 | **Entrega y Cierre** | 2026-10-02 → 2026-09-22 (-10d) | 2026-10-08 → 2026-09-25 (-13d) | 0h → 3.5d | 0d → none |  |
| 129 | Aplicar correcciones indicadas por el jurado | 2026-10-02 → 2026-09-22 (-10d) | 2026-10-06 → 2026-09-24 (-12d) | 16h → 1.88d | 0d → none | constraint none → start no later than 2026-09-22 |
| 130 | Imprimir, empastar y preparar copias finales | 2026-10-06 → 2026-09-24 (-12d) | 2026-10-06 → 2026-09-24 (-12d) | 4h → 0.5d | 0d → none | constraint none → start no later than 2026-09-24 |
| 131 | Entrega formal a biblioteca y facultad | 2026-10-07 → 2026-09-25 (-12d) | 2026-10-07 → 2026-09-25 (-12d) | 4h → 0.38d | 0d → none |  |
| 132 | Cierre administrativo del proyecto | 2026-10-07 → 2026-09-25 (-12d) | 2026-10-07 → 2026-09-25 (-12d) | 4h → 0.5d | 0d → none | constraint none → start no later than 2026-09-25 |
| 133 | HITO — Proyecto de Graduación Completado | 2026-10-08 → 2026-09-25 (-13d) | 2026-10-08 → 2026-09-25 (-13d) | 0h → 0d | 0d → none |  |
